# FCMP++/Carrot Plan

Schedule from Planner, 2026-07-22 to 2027-04-27.
The Monero Project

## Calendars

- Default: Mon-Fri 08:00-12:00, 13:00-17:00; Sat-Sun off.

## Schedule

| ID | Task | Duration | Start | Finish | Predecessors | Complete | Constraint | Work |
| --- | --- | --- | --- | --- | --- | --- | --- | --- |
| 1 | Circuit + Gadget Library Audit | 20d | 2026-07-29 | 2026-08-25 |  |  | start no earlier than 2026-07-29 | 160h |
| 2 | FCMP++ Phase 2 audit | 20d | 2026-07-29 | 2026-08-25 |  |  | start no earlier than 2026-07-29 | 160h |
| 3 | FCMP++ Phase 3 audit | 20d | 2026-08-26 | 2026-09-22 | 2 |  |  | 160h |
| 4 | FCMP++ further integretion audit? | 40d | 2026-08-26 | 2026-10-20 | 1 |  |  | 320h |
| 5 | FFI and selene_scalar_from_bytes | 3d | 2026-07-24 | 2026-07-28 |  | 100% | start no earlier than 2026-07-24 | 24h |
| 6 | Curve trees and outputs -> leaves | 3d | 2026-08-12 | 2026-08-14 | 5 | 100% | start no earlier than 2026-08-12 | 24h |
| 7 | Tower cycle and hash_grow | 3d | 2026-08-21 | 2026-08-25 | 6 | 100% | start no earlier than 2026-08-21 | 24h |
| 8 | point_to_cycle_scalar | 2d | 2026-08-26 | 2026-08-27 | 7 | 100% |  | 16h |
| 9 | get_tree_extension | 3d | 2026-08-28 | 2026-09-01 | 8 | 100% |  | 24h |
| 10 | verify FCMP++ proofs tooling - #11407 | 1d | 2026-10-07 | 2026-10-07 | 9 |  | start no earlier than 2026-10-07 | 8h |
| 11 | tree building DB integration | 3d | 2026-09-02 | 2026-09-04 | 9 |  |  | 24h |
| 12 | Consensus verification integration | 0d | 2026-10-08 | 2026-10-08 | 11, 10, 9 |  |  |  |
| 13 | FCMP++ Phase 3 misc merges | 1d | 2026-10-08 | 2026-10-08 | 12, 11, 10, 9 |  |  | 8h |
| 14 | mx25519 unclamped + other PRs | 2d | 2026-07-22 | 2026-07-23 |  | 100% |  | 16h |
| 15 | Generator T,U,V fix merges | 0.78d | 2026-08-12 | 2026-08-12 |  | 100% | start no earlier than 2026-08-12 | 6.25h |
| 16 | mx25519 merge | 3d | 2026-10-14 | 2026-10-16 | 14 | 100% | start no earlier than 2026-10-14 | 24h |
| 17 | carrot_core merge | 5d | 2026-10-19 | 2026-10-23 | 15, 16 |  |  | 40h |
| 18 | UkoeHB's carrot_impl review | 2d | 2026-07-27 | 2026-07-28 |  | 100% | start no earlier than 2026-07-27 | 16h |
| 19 | tests_common library | 1d | 2026-10-19 | 2026-10-19 |  | 28% | start no earlier than 2026-10-19 | 8h |
| 20 | carrot_impl merge | 5d | 2026-10-26 | 2026-10-30 | 19, 18, 17 |  |  | 40h |
| 21 | wallet: upstream misc stuff before FCMP++ | 1d | 2026-08-12 | 2026-08-12 |  |  | start no earlier than 2026-08-12 | 8h |
| 22 | carrot-fcmp integration merges | 5d | 2026-11-02 | 2026-11-06 | 21, 20 |  |  | 40h |
| 23 | RandomX v2 + intermediate merge | 5d | 2026-10-19 | 2026-10-23 |  |  | start no earlier than 2026-10-19 | 40h |
| 24 | TX relay v2 double-spend debug | 5d | 2026-07-22 | 2026-07-28 |  | 100% |  | 40h |
| 25 | TX relay v2 merge | 10d | 2026-10-07 | 2026-10-20 | 24 |  | start no earlier than 2026-10-07 | 80h |
| 26 | guix: add rust | 5d | 2026-07-22 | 2026-07-28 |  | 100% |  | 40h |
| 27 | guix: bootstapple FCMP++ | 5d | 2026-07-29 | 2026-08-04 | 26 | 100% |  | 40h |
| 28 | HF activation merge | 1d | 2026-11-09 | 2026-11-09 | 27, 25, 23, 22, 13 | 22% |  | 8h |
| 29 | Pre-release code freeze | 20d | 2026-11-10 | 2026-12-07 | 28 |  |  | 160h |
| 30 | First HF-enabled binary release | 5d | 2026-12-08 | 2026-12-14 | 29, 28 |  |  | 40h |
| 31 | HF mandatory waiting period | 120d | 2026-11-10 | 2027-04-26 | 28 |  |  | 960h |
| 32 | Circuit + Gadget follow-up dev | 10d | 2026-08-26 | 2026-09-08 | 1 |  |  | 80h |
| 33 | FCMP++ integration follow-up dev | 10d | 2026-10-21 | 2026-11-03 | 3, 4, 32 |  |  | 80h |
| 34 | Follow-up fix binary release | 5d | 2026-11-04 | 2026-11-10 | 33 |  |  | 40h |
| 35 | Trezor HW dev | 90d | 2026-07-22 | 2026-11-24 |  |  |  | 720h |
| 36 | Trezor HW merges | 5d | 2026-11-25 | 2026-12-01 | 35 |  |  | 40h |
| 37 | Ledger HW dev | 90d | 2026-07-22 | 2026-11-24 |  |  |  | 720h |
| 38 | Ledger HW merges | 5d | 2026-11-25 | 2026-12-01 | 37 |  |  | 40h |
| 39 | Multisig dev | 45d | 2026-07-22 | 2026-09-22 |  |  |  | 360h |
| 40 | Multisig merges | 1d | 2026-09-23 | 2026-09-23 | 39 |  |  | 8h |
| 41 | Hot-cold dev | 5d | 2026-07-22 | 2026-07-28 |  |  |  | 40h |
| 42 | Hot-cold merges | 5d | 2026-07-29 | 2026-08-04 | 41 |  |  | 40h |
| 43 | Wallet knowledge dev | 5d | 2026-07-29 | 2026-08-04 | 41 |  |  | 40h |
| 44 | Wallet knowledge merges | 5d | 2026-08-05 | 2026-08-11 | 43 |  |  | 40h |
| 45 | Fully-featured merge | 1d | 2026-12-02 | 2026-12-02 | 33, 44, 42, 28, 40, 38, 36 |  |  | 8h |
| 46 | Fully-featured binary release | 5d | 2026-12-03 | 2026-12-09 | 45 |  |  | 40h |
| 47 | Pre-activation code freeze | 40d | 2026-12-03 | 2027-01-27 | 45 |  |  | 320h |
| 48 | FCMP++ activation | 1d | 2027-04-27 | 2027-04-27 | 47, 31 |  |  | 8h |

Notes:
- 5: https://github.com/monero-project/monero/pull/10359
- 6: https://github.com/monero-project/monero/pull/10360
- 7: https://github.com/monero-project/monero/pull/10361
- 8: https://github.com/monero-project/monero/pull/10362
- 9: https://github.com/monero-project/monero/pull/10724
- 10: https://github.com/monero-project/monero/pull/11407
- 11: https://github.com/monero-project/monero/pull/11425
- 12: https://github.com/monero-project/monero/pull/11440
- 17: https://github.com/monero-project/monero/pull/9559
- 18: https://github.com/seraphis-migration/monero/pull/427
- 19: https://github.com/monero-project/monero/pull/10934
- 20: https://github.com/monero-project/monero/pull/9697
- 21: https://github.com/monero-project/monero/pull/10995
- 26: https://github.com/monero-project/monero/pull/9801
- 27: https://github.com/monero-project/monero/pull/9440
